# 船厂智能监控项目

Schedule from a web Gantt chart, 2026-05-20 to 2026-08-14.
Saturdays and Sundays are off

## Schedule

| ID | WBS | Task | Duration | Start | Finish | Predecessors | inPeople | Status |
| --- | --- | --- | --- | --- | --- | --- | --- | --- |
| 2 | 1 | 系统总体设计方案编写 | 2d | 2026-05-20 | 2026-05-21 |  | 陈建炜 |  |
| 3 | 2 | 系统总体设计方案评审 | 1d | 2026-05-22 | 2026-05-22 |  | 陈建炜、贺文飞 |  |
| 4 | 3 | 测试环境硬件准备（摄像头采购及安装、GPU服务器准备） | 6d | 2026-05-25 | 2026-06-01 |  | 刘欢、张春林 |  |
| 5 | 4 | 测试环境基础环境搭建（关系型数据库、向量数据库、对象存储、缓存数据库搭建） | 2d | 2026-05-25 | 2026-05-26 |  | 刘栋 |  |
| 6 | 5 | 后端系统框架以及表结构创建 | 1d | 2026-05-27 | 2026-05-27 |  | 刘栋 |  |
| 7 | 6 | 桌面应用设计 | 2d | 2026-05-25 | 2026-05-26 |  |  |  |
| 8 | 7 | 前端框架搭建、用户体系和权限控制功能开发 | 1d | 2026-05-27 | 2026-05-27 | 7 |  | waiting |
| 9 | 8 | 设备管理页面开发 | 3d | 2026-05-28 | 2026-06-01 | 8 |  | waiting |
| 10 | 9 | 事件告警页面开发 | 3d | 2026-06-02 | 2026-06-04 | 9 |  | waiting |
| 11 | 10 | 配置管理页面开发 | 3d | 2026-06-05 | 2026-06-09 | 10 |  | waiting |
| 12 | 11 | 记录管理页面开发 | 3d | 2026-06-10 | 2026-06-12 | 11 |  | waiting |
| 13 | 12 | 后端功能详细设计 | 2d | 2026-05-25 | 2026-05-26 |  |  |  |
| 14 | 13 | 用户体系和权限功能开发 | 1d | 2026-05-27 | 2026-05-27 | 13 |  | waiting |
| 15 | 14 | 设备管理相关功能后端开发 | 3d | 2026-05-28 | 2026-06-01 | 14 |  | waiting |
| 16 | 15 | 事件告警相关功能后端开发 | 3d | 2026-06-02 | 2026-06-04 | 15 |  | waiting |
| 17 | 16 | 配置管理相关功能后端开发 | 3d | 2026-06-05 | 2026-06-09 | 16 |  | waiting |
| 18 | 17 | 记录管理相关功能后端开发 | 3d | 2026-06-10 | 2026-06-12 | 17 |  | waiting |
| 19 | 18 | 智能分析功能详细设计 | 2d | 2026-05-27 | 2026-05-28 |  |  |  |
| 20 | 19 | 视频流获取功能开发 | 1d | 2026-05-29 | 2026-05-29 | 19 |  | waiting |
| 21 | 20 | 人员检测跟踪以及身份识别功能开发 | 4d | 2026-06-01 | 2026-06-04 | 20 |  | waiting |
| 22 | 21 | 人员进出监控与在岗状态功能开发 | 1d | 2026-06-05 | 2026-06-05 | 21 |  | waiting |
| 23 | 22 | 电子围栏与越界管理功能开发 | 1d | 2026-06-08 | 2026-06-08 | 22 |  | waiting |
| 24 | 23 | 班组点名与人员统计功能开发 | 1d | 2026-06-09 | 2026-06-09 | 23 |  | waiting |
| 25 | 24 | 集装箱进出与堆放监控功能开发 | 2d | 2026-06-10 | 2026-06-11 | 24 |  | waiting |
| 26 | 25 | 小物件流转追踪功能开发 | 2d | 2026-06-12 | 2026-06-15 | 25 |  | waiting |
| 27 | 26 | 垃圾桶分类考核功能开发 | 2d | 2026-06-16 | 2026-06-17 | 26 |  | waiting |
| 28 | 27 | 物品占位与通道管控功能开发 | 1d | 2026-06-18 | 2026-06-18 | 27 |  | waiting |
| 29 | 28 | 空间冲突预警功能开发 | 2d | 2026-06-19 | 2026-06-22 | 28 |  | waiting |
| 30 | 29 | 异常时段报警功能开发 | 1d | 2026-06-23 | 2026-06-23 | 29 |  | waiting |
| 31 | 30 | 安全事件识别功能开发 | 2d | 2026-06-24 | 2026-06-25 | 30 |  | waiting |
| 32 | 31 | 敏感物品和军人信息保护功能开发 | 1d | 2026-06-26 | 2026-06-26 | 31 |  | waiting |
| 33 | 32 | 目标检测算法数据标注 | 7d | 2026-06-15 | 2026-06-23 |  |  |  |
| 34 | 33 | 目标检测算法训练 | 5d | 2026-06-29 | 2026-07-03 |  |  |  |
| 35 | 34 | 垃圾分类视频标注 | 2d | 2026-06-24 | 2026-06-25 | 33 |  | waiting |
| 36 | 35 | 垃圾分类模型训练 | 3d | 2026-07-06 | 2026-07-08 | 34 |  | waiting |
| 37 | 36 | 系统集成测试 | 15d | 2026-07-09 | 2026-07-29 |  |  |  |
| 38 | 37 | 测试问题修复 | 5d | 2026-07-30 | 2026-08-05 | 37 |  | waiting |
| 39 | 38 | 系统回归测试 | 4d | 2026-08-06 | 2026-08-11 | 38 |  | waiting |
| 40 | 39 | 系统部署 | 3d | 2026-08-12 | 2026-08-14 | 39 |  | waiting |

Notes:
- 33: 至少需要每一类1000个样本，类别包括普通人、军人、垃圾桶、集装箱、火灾、敏感物品（装备）
- 35: 至少需要每一类500个视频，类别包括扔垃圾、从垃圾桶旁边走过
